# OpenEHS - Project Plan

Schedule from MS Project, 2011-01-12 to 2011-01-12.

## Calendars

- Standard: Mon-Fri 08:00-12:00, 13:00-17:00; Sat-Sun off.

## Schedule

| ID | WBS | Task | Type | Duration | Start | Finish | Total slack |
| --- | --- | --- | --- | --- | --- | --- | --- |
| 1 | 1 | **Finish Ghana Hospital Project** |  | 1d? | 2011-01-12 | 2011-01-12 | 0d |
| 2 | 1.1 | **Create Documentation** |  | 1d? | 2011-01-12 | 2011-01-12 | 0d |
| 3 | 1.1.1 | Update Project Charter | manual | 1d? | 2011-01-12 | 2011-01-12 |  |
| 4 | 1.1.2 | Create Project Management plan | manual | 1d? | 2011-01-12 | 2011-01-12 |  |
| 5 | 1.1.3 | Revise SSRS | manual | 1d? | 2011-01-12 | 2011-01-12 |  |
| 6 | 1.2 | **Implement Project** |  | 1d? | 2011-01-12 | 2011-01-12 | 0d |
| 7 | 1.2.1 | **Create Database** |  | 1d? | 2011-01-12 | 2011-01-12 | 0d |
| 8 | 1.2.1.1 | Script Database | manual | 1d? | 2011-01-12 | 2011-01-12 |  |
| 9 | 1.2.1.2 | Create ERD | manual | 1d? | 2011-01-12 | 2011-01-12 |  |
| 10 | 1.2.1.3 | Create Dummy Data | manual | 1d? | 2011-01-12 | 2011-01-12 |  |
| 11 | 1.2.1.4 | Write Stored Procedures | manual | 1d? | 2011-01-12 | 2011-01-12 |  |
| 12 | 1.2.2 | **Develop Domain Models** |  | 1d? | 2011-01-12 | 2011-01-12 | 0d |
| 13 | 1.2.2.1 | Create Patient Management | manual | 1d? | 2011-01-12 | 2011-01-12 |  |
| 14 | 1.2.2.2 | Create Inventory Management | manual | 1d? | 2011-01-12 | 2011-01-12 |  |
| 15 | 1.2.2.3 | Create Encounter Management | manual | 1d? | 2011-01-12 | 2011-01-12 |  |
| 16 | 1.2.2.4 | Create Billing Management | manual | 1d? | 2011-01-12 | 2011-01-12 |  |
| 17 | 1.2.3 | **Create Presentation Layer** |  | 1d? | 2011-01-12 | 2011-01-12 | 0d |
| 18 | 1.2.3.1 | Create Style Sheets | manual | 1d? | 2011-01-12 | 2011-01-12 |  |
| 19 | 1.2.3.2 | Create Inventory Interface | manual | 1d? | 2011-01-12 | 2011-01-12 |  |
| 20 | 1.2.3.3 | Create Patient Interface | manual | 1d? | 2011-01-12 | 2011-01-12 |  |
| 21 | 1.2.3.4 | Create Encounter Interface | manual | 1d? | 2011-01-12 | 2011-01-12 |  |
| 22 | 1.2.3.5 | Create Payment and Billing Interface | manual | 1d? | 2011-01-12 | 2011-01-12 |  |
| 23 | 1.2.4 | **Run Unit Tests** |  | 1d? | 2011-01-12 | 2011-01-12 | 0d |
| 24 | 1.2.4.1 | Create Unit Tests | manual | 1d? | 2011-01-12 | 2011-01-12 |  |
| 25 | 1.2.4.2 | Run Unit Tests | manual | 1d? | 2011-01-12 | 2011-01-12 |  |

| ID | WBS | Task | Type | Duration | Start | Finish | Total slack |
| --- | --- | --- | --- | --- | --- | --- | --- |
| 26 | 1.3 | **Deploy Project** |  | 1d? | 2011-01-12 | 2011-01-12 | 0d |
| 27 | 1.3.1 | **Install Project** |  | 1d? | 2011-01-12 | 2011-01-12 | 0d |
| 28 | 1.3.1.1 | Install Database | manual | 1d? | 2011-01-12 | 2011-01-12 |  |
| 29 | 1.3.1.2 | Install Server Software | manual | 1d? | 2011-01-12 | 2011-01-12 |  |
| 30 | 1.3.1.3 | Install Client Software | manual | 1d? | 2011-01-12 | 2011-01-12 |  |
| 31 | 1.3.2 | On-Site Implementation Testing | manual | 1d? | 2011-01-12 | 2011-01-12 |  |
| 32 | 1.3.3 | Train users | manual | 1d? | 2011-01-12 | 2011-01-12 |  |
